# Proyecto - Simulacion de choques

Schedule from MS Project, 2012-04-11 to 2012-10-31.

## Calendars

- Calendar 1: Mon-Sun 09:00-18:00.

## Schedule

| ID | WBS | Task | Duration | Start | Finish | Predecessors | Total slack | Free slack | Constraint |
| --- | --- | --- | --- | --- | --- | --- | --- | --- | --- |
| 1 | 1 | **Simulacion de choques** | 229d | 2012-04-11 | 2012-10-31 |  | 0d |  |  |
| 2 | 1.1 | **Fase de inicio** | 55d | 2012-04-11 | 2012-05-29 |  | 33d |  |  |
| 3 | 1.1.1 | **Investigacion** | 32d | 2012-04-11 | 2012-05-09 |  | 33d | 0d |  |
| 4 | 1.1.1.1 | Investigacion de motores Graficos | 8d | 2012-04-11 | 2012-04-18 |  | 33d | 0d | start no earlier than 2012-04-11 |
| 5 | 1.1.1.2 | Investigacion de algoritmos de deformación | 8d | 2012-04-18 | 2012-04-25 | 4 | 33d | 0d |  |
| 6 | 1.1.1.3 | Investigación de modelos matemáticos de deformación | 8d | 2012-04-25 | 2012-05-02 | 5 | 33d | 0d |  |
| 7 | 1.1.1.4 | Investigación del Finite Element Method | 8d | 2012-05-02 | 2012-05-09 | 6 | 33d |  |  |
| 8 | 1.1.2 | **Iteracion 0** | 23d | 2012-05-09 | 2012-05-29 |  | 33d | 0d |  |
| 9 | 1.1.2.1 | **Eleccion de la plataforma / Lenguaje a utilizar / Framework para la interfaz grafica** | 7d | 2012-05-09 | 2012-05-15 | 3 | 33d |  |  |
| 10 | 1.1.2.1.1 | Análisis | 7d | 2012-05-09 | 2012-05-15 |  | 33d | 0d |  |
| 11 | 1.1.2.2 | Investigacion de software de modelado | 3d | 2012-05-15 | 2012-05-18 | 10 | 33d | 0d |  |
| 12 | 1.1.2.3 | Investigación de implementaciones de FEM (motor de procesamiento) | 6d | 2012-05-18 | 2012-05-23 | 11 | 33d | 0d |  |
| 13 | 1.1.2.4 | **Pruebas de concepto** | 7d | 2012-05-23 | 2012-05-29 |  | 33d |  |  |
| 14 | 1.1.2.4.1 | Pruebas de interefaz gráfica con el lenguaje / framework elegido | 7d | 2012-05-23 | 2012-05-29 | 12 | 33d |  |  |
| 15 | 1.1.2.4.2 | Pruebas de alguna implementacion FEM encontrada | 6d | 2012-05-23 | 2012-05-28 | 12 | 34d |  |  |
| 16 | 1.2 | **Fase de Ejecución** | 138d | 2012-05-29 | 2012-09-29 |  | 31d | 0d |  |
| 17 | 1.2.1 | **Iteración 1** | 31d | 2012-05-29 | 2012-06-26 | 8 | 33d | 0d |  |
| 18 | 1.2.1.1 | Diseño de la interfaz gráfica de usuario para el preprocesamiento | 3d | 2012-05-29 | 2012-06-01 |  | 33d | 0d |  |
| 19 | 1.2.1.2 | Definicion de la interfaz de datos entre el motor y el preprocesamiento | 3d | 2012-06-01 | 2012-06-04 | 18 | 33d | 0d |  |
| 20 | 1.2.1.3 | **Desarrollo** | 22d | 2012-06-04 | 2012-06-23 |  | 33d |  |  |
| 21 | 1.2.1.3.1 | **Desarrollo del motor de FEM (Parte 1)** | 5d | 2012-06-04 | 2012-06-08 |  | 72d |  |  |
| 22 | 1.2.1.3.1.1 | Adaptacion de la biblioteca FEM a utilizar | 5d | 2012-06-04 | 2012-06-08 | 19 | 72d |  |  |
| 23 | 1.2.1.3.2 | **Desarrollo de interfaz gráfica de preprocesameinto (Parte 1)** | 22d | 2012-06-04 | 2012-06-23 | 19 | 33d | 0d |  |
| 24 | 1.2.1.3.2.1 | Creación de escenario 3D para carga de modelos | 12d | 2012-06-04 | 2012-06-14 |  | 33d | 0d |  |
| 25 | 1.2.1.3.2.2 | Creación de botones y listas de parámetros configurables | 7d | 2012-06-14 | 2012-06-21 | 24 | 33d | 0d |  |
| 26 | 1.2.1.3.2.3 | Creación de modelos de ejemplo | 2d | 2012-06-21 | 2012-06-22 | 25 | 33d | 0d |  |
| 27 | 1.2.1.3.2.4 | Carga de modelos | 1d | 2012-06-22 | 2012-06-23 | 26 | 33d |  |  |
| 28 | 1.2.1.4 | Testeo | 3d | 2012-06-23 | 2012-06-26 | 23 | 33d |  |  |
| 29 | 1.2.1.5 | Creación de poster | 4d | 2012-06-15 | 2012-06-18 |  | 41.88d |  | start no earlier than 2012-06-15 |

Notes:
- 24: Integrar el escenario 3d utilizando las pruebas de conceptos previas a la interfaz de usuario en si. Ver con que framwork hacer la interfaz de usuario.
- 25: Botones: Material, fuerza y posicion / Que se visualice en el modelo 3d / Comincar modelo 3d con panel de opciones

| ID | WBS | Task | Duration | Start | Finish | Predecessors | Total slack | Free slack |
| --- | --- | --- | --- | --- | --- | --- | --- | --- |
| 30 | 1.2.2 | **Iteración 2** | 29d | 2012-06-26 | 2012-07-22 | 17 | 33d | 0d |
| 31 | 1.2.2.1 | **Desarrollo del motor de FEM (Parte 2)** | 15d | 2012-06-26 | 2012-07-09 | 17 | 43d | 10d |
| 32 | 1.2.2.1.1 | Lectura y procesamiento de los modelos preprocesados desde la interfaz previamente definida | 15d | 2012-06-26 | 2012-07-09 |  | 43d |  |
| 33 | 1.2.2.2 | **Desarrollo de interfaz gráfica de preprocesamineto (Parte 2)** | 25d | 2012-06-26 | 2012-07-18 | 17 | 33d | 0d |
| 34 | 1.2.2.2.1 | Mejorar la visualizacion 3D | 8d | 2012-06-26 | 2012-07-03 |  | 33d | 0d |
| 35 | 1.2.2.2.2 | Expansión de parámetros configurables | 8d | 2012-07-03 | 2012-07-10 | 34 | 33d | 0d |
| 36 | 1.2.2.2.3 | Almacenamiento de modelos preprocesados | 9d | 2012-07-10 | 2012-07-18 | 35 | 33d |  |
| 37 | 1.2.2.3 | Testeo | 4d | 2012-07-18 | 2012-07-22 | 31, 33 | 33d |  |
| 38 | 1.2.3 | **Iteración 3** | 44d | 2012-07-22 | 2012-08-30 | 30 | 33d | 0d |
| 39 | 1.2.3.1 | Definicion de la interfaz de datos entre el motor y el postprocesamiento | 4d | 2012-07-22 | 2012-07-25 |  | 53d | 0d |
| 40 | 1.2.3.2 | Diseño de la interfaz gráfica de usuario para el postprocesamiento | 20d | 2012-07-25 | 2012-08-12 | 39 | 53d |  |
| 41 | 1.2.3.3 | **Desarrollo del motor de FEM (Parte 3)** | 6d | 2012-07-22 | 2012-07-27 |  | 67d | 34d |
| 42 | 1.2.3.3.1 | Almacenamiento del resultado del procesamiento bajo la interfaz definida | 6d | 2012-07-22 | 2012-07-27 |  | 67d |  |
| 43 | 1.2.3.4 | **Desarrollo de interfaz grafica de postprocesamiento (Parte 1)** | 40d | 2012-07-22 | 2012-08-26 |  | 33d | 0d |
| 44 | 1.2.3.4.1 | Creación de escenario 3D para carga de los resultados | 15d | 2012-07-22 | 2012-08-04 |  | 33d | 0d |
| 45 | 1.2.3.4.2 | Creación de la lista de los frames a visualizar | 4d | 2012-08-04 | 2012-08-08 | 44 | 33d | 0d |
| 46 | 1.2.3.4.3 | Cargar resultados de procesamiento | 14d | 2012-08-08 | 2012-08-20 | 45 | 33d | 0d |
| 47 | 1.2.3.4.4 | Visualizar los resultados frame por frame. | 7d | 2012-08-20 | 2012-08-26 | 46 | 33d |  |
| 48 | 1.2.3.5 | Testeo | 4d | 2012-08-26 | 2012-08-30 | 41, 43 | 33d |  |
| 49 | 1.2.4 | **Iteración 4** | 22d | 2012-08-30 | 2012-09-18 | 38 | 31d | 0d |
| 50 | 1.2.4.1 | **Desarrollo de interfaz gráfica de preprocesamiento (Parte 3)** | 15d | 2012-08-30 | 2012-09-12 |  | 31d | 0d |
| 51 | 1.2.4.1.1 | Agregar parametros adicionales | 15d | 2012-08-30 | 2012-09-12 |  | 31d | 0d |
| 52 | 1.2.4.2 | **Desarrollo de interfaz grafica de postprocesamiento (Parte 2)** | 14d | 2012-08-30 | 2012-09-11 |  | 36d | 1d |
| 53 | 1.2.4.2.1 | Visualizacion de los resultados en base a diferentes criterios (Presion, tension y desplazamiento) | 7d | 2012-08-30 | 2012-09-05 |  | 36d | 0d |
| 54 | 1.2.4.2.2 | Opcion para ver los resultados de forma continua y fluida | 7d | 2012-09-05 | 2012-09-11 | 53 | 36d |  |

Notes:
- 34: Permitir el controlar la camara de la visualizacion 3D con el mouse
- 35: Constraints, modelo rigido no deformable.
- 40: Incluye: / * Lista de frames de los resultados / * Visualizacion del modelo 3d / * Visualizacion de los resultados en base a diferentes criterios (Presion, tension y desplazamiento) / * Visualizar los resultados de forma continua y fluida

| ID | WBS | Task | Duration | Start | Finish | Predecessors | Total slack | Free slack | Constraint |
| --- | --- | --- | --- | --- | --- | --- | --- | --- | --- |
| 55 | 1.2.4.3 | **Desarrollo del motor FEM (Parte 4)** | 7d | 2012-09-12 | 2012-09-18 |  | 31d |  |  |
| 56 | 1.2.4.3.1 | Agregar los parametros adicionales al calculo del procesamiento | 7d | 2012-09-12 | 2012-09-18 | 51 | 31d |  |  |
| 57 | 1.2.4.4 | Testeo | 3d | 2012-09-12 | 2012-09-15 | 50, 52, 45 | 35d |  |  |
| 58 | 1.2.5 | **Iteracion 5** | 7d | 2012-09-18 | 2012-09-25 | 49 | 31d | 0d |  |
| 59 | 1.2.5.1 | Integracion | 3d | 2012-09-18 | 2012-09-21 |  | 35d |  |  |
| 60 | 1.2.5.2 | Creacion de modelos mas elaborados | 3d | 2012-09-18 | 2012-09-21 |  | 35d |  |  |
| 61 | 1.2.5.3 | Testing General y Final | 7d | 2012-09-18 | 2012-09-25 |  | 31d |  |  |
| 62 | 1.2.6 | **Iteración 6** | 5d | 2012-09-25 | 2012-09-29 | 58 | 31d |  |  |
| 63 | 1.2.6.1 | Manual de Usuario | 3d | 2012-09-25 | 2012-09-27 |  | 31d | 0d |  |
| 64 | 1.2.6.2 | Manual de Instalación y Configuración | 2d | 2012-09-27 | 2012-09-29 | 63 | 31d |  |  |
| 65 | 1.2.6.3 | Creación del instalador | 2d | 2012-09-27 | 2012-09-29 | 63 | 31d |  |  |
| 66 | 1.3 | **Fase de Cierre** | 5d | 2012-09-29 | 2012-10-03 | 16 | 31d |  |  |
| 67 | 1.3.1 | **Cierre del Proyecto** | 5d | 2012-09-29 | 2012-10-03 |  | 31d |  |  |
| 68 | 1.3.1.1 | Documentos de Lecciones Aprendidas | 3d | 2012-09-29 | 2012-10-02 |  | 33d |  |  |
| 69 | 1.3.1.2 | Documentos de Cierre | 3d | 2012-09-29 | 2012-10-02 |  | 33d |  |  |
| 70 | 1.3.1.3 | Preparación de la presentación comercial | 5d | 2012-09-29 | 2012-10-03 |  | 31d |  |  |
| 71 | 1.4 | **Fase de Seguimiento, Control y Ajustes** | 229d | 2012-04-11 | 2012-10-31 |  | 0d |  |  |
| 72 | 1.4.1 | Reuniones y mails | 229d | 2012-04-11 | 2012-10-31 |  | 0d |  | start no earlier than 2012-04-11 |
| 73 | 1.4.2 | Informe de Avance (entregables) | 229d | 2012-04-11 | 2012-10-31 |  | 0d |  | start no earlier than 2012-04-11 |
| 74 | 1.4.3 | Ajustes de la planificación | 229d | 2012-04-11 | 2012-10-31 |  | 0d |  | start no earlier than 2012-04-11 |

Notes:
- 56: Masa extra al modelo. (en general o a algunas partes)
