# proyectoFinal

Schedule from MS Project, 2011-04-15 to 2011-10-28.

## Calendars

- Estándar: Mon-Fri 16:00-19:00, 21:00-22:30; Sat-Sun 12:00-22:00.

## Resources

| Resource |
| --- |
| to |
| todos |
| equipo |
| Adriel |
| Matias |
| Hernán |
| Pavel |
| Marianela |
| Matías |
| Adrile |
| Hernan |

## Schedule

| ID | WBS | Task | Duration | Start | Finish | Predecessors | Total slack | Constraint | Resources | Work |
| --- | --- | --- | --- | --- | --- | --- | --- | --- | --- | --- |
| 1 | 1 | **Acción Ciudadana** | 149d | 2011-04-15 | 2011-10-28 |  | 0d |  | equipo | 13896h |
| 2 | 1.1 | **Fase de Inicio** | 68d | 2011-04-15 | 2011-07-13 |  | 0d |  | equipo | 2208h |
| 3 | 1.1.1 | **Etapa 0: Inicio** | 68d | 2011-04-15 | 2011-07-13 |  | 0d |  | equipo | 1664h |
| 4 | 1.1.1.1 | **Gestión Inicial** | 37d | 2011-04-15 | 2011-06-02 |  | 0d |  | equipo | 592h |
| 5 | 1.1.1.1.1 | Acta de Constitución del Proyecto (entregable 1) | 11d | 2011-04-15 | 2011-04-29 |  | 0d | start no earlier than 2011-04-15 | equipo | 88h |
| 6 | 1.1.1.1.2 | Documento de Plan de Gestión del Proyecto (entregable 2) | 16d | 2011-04-29 | 2011-05-20 | 5 | 0d | start no earlier than 2011-04-15 | equipo | 128h |
| 7 | 1.1.1.1.3 | Documento de Plan General del Proyecto (entregable 3) | 10d | 2011-05-20 | 2011-06-02 | 6 | 0d |  | equipo | 80h |
| 8 | 1.1.1.2 | **Análisis y Diseño Preliminar** | 31d | 2011-06-02 | 2011-07-13 | 4 | 0d |  | equipo | 528h |
| 9 | 1.1.1.2.1 | Documento de Análisis de Infraestructura de la Solución (entregable 4) | 3d | 2011-06-02 | 2011-06-05 | 7 | 28d |  | equipo | 24h |
| 10 | 1.1.1.2.2 | Documento de Arquitectura del sistema (entregable 5) | 3d | 2011-06-02 | 2011-06-05 | 7 | 0d |  | equipo | 24h |
| 11 | 1.1.1.2.3 | Documentos de Análisis Funcional (entregable 6) | 7d | 2011-06-05 | 2011-06-15 | 10 | 0d |  | equipo | 56h |
| 12 | 1.1.1.2.4 | Documentos de Diseño (entregable 7) | 20d | 2011-06-15 | 2011-07-11 | 11 | 0d |  | equipo | 160h |
| 13 | 1.1.1.2.5 | Armado de historias del product backlog | 1d | 2011-06-15 | 2011-06-17 | 11 | 20d |  | equipo | 8h |
| 14 | 1.1.1.2.6 | Instalación y puesta a punto IDE, BD, FWKs, dependencias y SCM | 1d | 2011-07-11 | 2011-07-13 | 12 | 0d |  | equipo | 8h |
| 16 | 1.2 | **Fase de Ejecución** | 80d | 2011-07-13 | 2011-10-26 | 2 | 0d |  | equipo | 5696h |
| 17 | 1.2.1 | **Etapa 1: Módulo Reclamo (entregable 8)** | 47d | 2011-07-13 | 2011-09-12 | 3 | 0d |  | Matias | 784h |
| 18 | 1.2.1.1 | **Alta de Reclamo** | 15d | 2011-07-13 | 2011-08-01 | 8 | 0d |  | Matias | 120h |
| 19 | 1.2.1.1.1 | Análisis | 1d | 2011-07-13 | 2011-07-14 |  | 0d |  |  |  |
| 20 | 1.2.1.1.2 | Diseño | 1d | 2011-07-14 | 2011-07-16 | 19 | 0d |  |  |  |
| 21 | 1.2.1.1.3 | Desarrollo | 12d | 2011-07-16 | 2011-07-31 | 20 | 0d |  |  |  |
| 22 | 1.2.1.1.4 | Testing | 0.5d | 2011-07-31 | 2011-07-31 | 21 | 0d |  |  |  |
| 23 | 1.2.1.1.5 | Documentación | 0.5d | 2011-07-31 | 2011-08-01 | 22 | 0d |  |  |  |
| 24 | 1.2.1.2 | **Modificación de Reclamo** | 7d | 2011-08-01 | 2011-08-11 | 18 | 0d |  | Matias | 56h |
| 25 | 1.2.1.2.1 | Análisis | 0.5d | 2011-08-01 | 2011-08-02 |  | 0d |  |  |  |
| 26 | 1.2.1.2.2 | Diseño | 0.5d | 2011-08-02 | 2011-08-03 | 25 | 0d |  |  |  |
| 27 | 1.2.1.2.3 | Desarrollo | 5d | 2011-08-03 | 2011-08-09 | 26 | 0d |  |  |  |
| 28 | 1.2.1.2.4 | Testing | 0.5d | 2011-08-09 | 2011-08-10 | 27 | 0d |  |  |  |
| 29 | 1.2.1.2.5 | Documentación | 0.5d | 2011-08-10 | 2011-08-11 | 28 | 0d |  |  |  |

| ID | WBS | Task | Type | Duration | Start | Finish | Predecessors | Total slack | Free slack | Resources | Work |
| --- | --- | --- | --- | --- | --- | --- | --- | --- | --- | --- | --- |
| 30 | 1.2.1.3 | **Búsqueda de Reclamo** |  | 10d | 2011-08-11 | 2011-08-24 | 24 | 0d |  | Matias | 80h |
| 31 | 1.2.1.3.1 | Análisis |  | 0.5d | 2011-08-11 | 2011-08-12 |  | 0d |  |  |  |
| 32 | 1.2.1.3.2 | Diseño |  | 0.5d | 2011-08-12 | 2011-08-13 | 31 | 0d |  |  |  |
| 33 | 1.2.1.3.3 | Desarrollo |  | 8d | 2011-08-13 | 2011-08-22 | 32 | 0d |  |  |  |
| 34 | 1.2.1.3.4 | Testing |  | 0.5d | 2011-08-22 | 2011-08-23 | 33 | 0d |  |  |  |
| 35 | 1.2.1.3.5 | Documentación |  | 0.5d | 2011-08-23 | 2011-08-24 | 34 | 0d |  |  |  |
| 36 | 1.2.1.4 | **Cancelación de Reclamo** |  | 3d | 2011-08-24 | 2011-08-28 | 30 | 0d |  | Matias | 24h |
| 37 | 1.2.1.4.1 | Análisis |  | 0.25d | 2011-08-24 | 2011-08-24 |  | 0d |  |  |  |
| 38 | 1.2.1.4.2 | Diseño |  | 0.5d | 2011-08-24 | 2011-08-25 | 37 | 0d |  |  |  |
| 39 | 1.2.1.4.3 | Desarrollo |  | 1.5d | 2011-08-25 | 2011-08-27 | 38 | 0d |  |  |  |
| 40 | 1.2.1.4.4 | Testing |  | 0.25d | 2011-08-27 | 2011-08-27 | 39 | 0d |  |  |  |
| 41 | 1.2.1.4.5 | Documentación |  | 0.5d | 2011-08-27 | 2011-08-28 | 40 | 0d |  |  |  |
| 42 | 1.2.1.5 | **Notificación de modificación de reclamo** |  | 7d | 2011-08-28 | 2011-09-06 | 36 | 0d |  | Matias | 56h |
| 43 | 1.2.1.5.1 | Análisis |  | 0.5d | 2011-08-28 | 2011-08-28 |  | 0d |  |  |  |
| 44 | 1.2.1.5.2 | Diseño |  | 0.5d | 2011-08-28 | 2011-08-28 | 43 | 0d |  |  |  |
| 45 | 1.2.1.5.3 | Desarrollo |  | 5d | 2011-08-29 | 2011-09-04 | 44 | 0d |  |  |  |
| 46 | 1.2.1.5.4 | Testing |  | 0.5d | 2011-09-04 | 2011-09-05 | 45 | 0d |  |  |  |
| 47 | 1.2.1.5.5 | Documentación |  | 0.5d | 2011-09-05 | 2011-09-06 | 46 | 0d |  |  |  |
| 48 | 1.2.1.6 | **Modificación de Estado** |  | 1d | 2011-09-06 | 2011-09-07 | 42 | 38d |  | Matias | 8h |
| 49 | 1.2.1.6.1 | Análisis | milestone | 0d | 2011-09-06 | 2011-09-06 |  | 38d | 0d |  |  |
| 50 | 1.2.1.6.2 | Diseño | milestone | 0d | 2011-09-06 | 2011-09-06 | 49 | 38d | 0d |  |  |
| 51 | 1.2.1.6.3 | Desarrollo |  | 0.5d | 2011-09-06 | 2011-09-07 | 50 | 38d | 0d |  |  |
| 52 | 1.2.1.6.4 | Testing |  | 0.25d | 2011-09-07 | 2011-09-07 | 51 | 38d | 0d |  |  |
| 53 | 1.2.1.6.5 | Documentación |  | 0.25d | 2011-09-07 | 2011-09-07 | 52 | 38d |  |  |  |

| ID | WBS | Task | Type | Duration | Start | Finish | Predecessors | Total slack | Free slack | Resources | Work |
| --- | --- | --- | --- | --- | --- | --- | --- | --- | --- | --- | --- |
| 54 | 1.2.1.7 | **Modificación de Prioridad** |  | 1d | 2011-09-06 | 2011-09-07 | 42 | 0d |  | Matias | 8h |
| 55 | 1.2.1.7.1 | Análisis | milestone | 0d | 2011-09-06 | 2011-09-06 |  | 0d |  |  |  |
| 56 | 1.2.1.7.2 | Diseño | milestone | 0d | 2011-09-06 | 2011-09-06 | 55 | 0d |  |  |  |
| 57 | 1.2.1.7.3 | Desarrollo |  | 0.5d | 2011-09-06 | 2011-09-07 | 56 | 0d |  |  |  |
| 58 | 1.2.1.7.4 | Testing |  | 0.25d | 2011-09-07 | 2011-09-07 | 57 | 0d |  |  |  |
| 59 | 1.2.1.7.5 | Documentación |  | 0.25d | 2011-09-07 | 2011-09-07 | 58 | 0d |  |  |  |
| 60 | 1.2.1.8 | **Detalle del Reclamo** |  | 1d | 2011-09-07 | 2011-09-09 | 54 | 0d |  | Matias | 8h |
| 61 | 1.2.1.8.1 | Análisis | milestone | 0d | 2011-09-07 | 2011-09-07 |  | 0d |  |  |  |
| 62 | 1.2.1.8.2 | Diseño | milestone | 0d | 2011-09-07 | 2011-09-07 | 61 | 0d |  |  |  |
| 63 | 1.2.1.8.3 | Desarrollo |  | 0.5d | 2011-09-08 | 2011-09-08 | 62 | 0d |  |  |  |
| 64 | 1.2.1.8.4 | Testing |  | 0.5d | 2011-09-08 | 2011-09-09 | 63 | 0d |  |  |  |
| 65 | 1.2.1.8.5 | Documentación | milestone | 0d | 2011-09-09 | 2011-09-09 | 64 | 0d |  |  |  |
| 66 | 1.2.1.9 | **Unificación de los Reclamos repetidos AUTOMÁTICO** |  | 3d | 2011-09-09 | 2011-09-12 | 60 | 34d |  | Matias | 24h |
| 67 | 1.2.1.9.1 | Análisis |  | 0.25d | 2011-09-09 | 2011-09-10 |  | 34d | 0d |  |  |
| 68 | 1.2.1.9.2 | Diseño |  | 0.25d | 2011-09-10 | 2011-09-10 | 67 | 34d | 0d |  |  |
| 69 | 1.2.1.9.3 | Desarrollo |  | 2d | 2011-09-10 | 2011-09-11 | 68 | 34d | 0d |  |  |
| 70 | 1.2.1.9.4 | Testing |  | 0.25d | 2011-09-11 | 2011-09-12 | 69 | 34d | 0d |  |  |
| 71 | 1.2.1.9.5 | Documentación |  | 0.25d | 2011-09-12 | 2011-09-12 | 70 | 34d |  |  |  |
| 72 | 1.2.1.10 | **Unificación de los Reclamos repetidos MANUAL** |  | 3d | 2011-09-09 | 2011-09-12 | 60 | 0d |  | Matias | 24h |
| 73 | 1.2.1.10.1 | Análisis |  | 0.25d | 2011-09-09 | 2011-09-10 |  | 0d |  |  |  |
| 74 | 1.2.1.10.2 | Diseño |  | 0.25d | 2011-09-10 | 2011-09-10 | 73 | 0d |  |  |  |
| 75 | 1.2.1.10.3 | Desarrollo |  | 2d | 2011-09-10 | 2011-09-11 | 74 | 0d |  |  |  |
| 76 | 1.2.1.10.4 | Testing |  | 0.25d | 2011-09-11 | 2011-09-12 | 75 | 0d |  |  |  |
| 77 | 1.2.1.10.5 | Documentación |  | 0.25d | 2011-09-12 | 2011-09-12 | 76 | 0d |  |  |  |

| ID | WBS | Task | Duration | Start | Finish | Predecessors | Total slack | Free slack | Resources | Work |
| --- | --- | --- | --- | --- | --- | --- | --- | --- | --- | --- |
| 79 | 1.2.2 | **Etapa 2: Módulo User Management (entregable 8)** | 31d | 2011-07-13 | 2011-08-22 | 8 | 50d |  | Adriel | 496h |
| 80 | 1.2.2.1 | **Definición de permisos para cada tipo de usuario** | 10d | 2011-07-13 | 2011-07-25 | 8 | 50d | 0d | Adriel | 80h |
| 81 | 1.2.2.1.1 | Análisis | 1d | 2011-07-13 | 2011-07-14 |  | 50d | 0d |  |  |
| 82 | 1.2.2.1.2 | Diseño | 1d | 2011-07-14 | 2011-07-16 | 81 | 50d | 0d |  |  |
| 83 | 1.2.2.1.3 | Desarrollo | 6d | 2011-07-16 | 2011-07-23 | 82 | 50d | 0d |  |  |
| 84 | 1.2.2.1.4 | Testing | 1.5d | 2011-07-23 | 2011-07-25 | 83 | 50d | 0d |  |  |
| 85 | 1.2.2.1.5 | Documentación | 0.5d | 2011-07-25 | 2011-07-25 | 84 | 50d |  |  |  |
| 86 | 1.2.2.2 | **Login de ciudadano, operador y administrador** | 2d | 2011-07-26 | 2011-07-29 | 80 | 50d | 0d | Adriel | 16h |
| 87 | 1.2.2.2.1 | Análisis | 0.25d | 2011-07-26 | 2011-07-26 |  | 50d | 0d |  |  |
| 88 | 1.2.2.2.2 | Diseño | 0.25d | 2011-07-26 | 2011-07-26 | 87 | 50d | 0d |  |  |
| 89 | 1.2.2.2.3 | Desarrollo | 1d | 2011-07-26 | 2011-07-28 | 88 | 50d | 0d |  |  |
| 90 | 1.2.2.2.4 | Testing | 0.25d | 2011-07-28 | 2011-07-29 | 89 | 50d | 0d |  |  |
| 91 | 1.2.2.2.5 | Documentación | 0.25d | 2011-07-29 | 2011-07-29 | 90 | 50d |  |  |  |
| 92 | 1.2.2.3 | **Alta de ciudadano, operador y administrador** | 5d | 2011-07-29 | 2011-08-04 | 86 | 50d | 0d | Adriel | 40h |
| 93 | 1.2.2.3.1 | Análisis | 0.25d | 2011-07-29 | 2011-07-29 |  | 50d | 0d |  |  |
| 94 | 1.2.2.3.2 | Diseño | 0.25d | 2011-07-30 | 2011-07-30 | 93 | 50d | 0d |  |  |
| 95 | 1.2.2.3.3 | Desarrollo | 3d | 2011-07-30 | 2011-08-02 | 94 | 50d | 0d |  |  |
| 96 | 1.2.2.3.4 | Testing | 1d | 2011-08-02 | 2011-08-04 | 95 | 50d | 0d |  |  |
| 97 | 1.2.2.3.5 | Documentación | 0.5d | 2011-08-04 | 2011-08-04 | 96 | 50d |  |  |  |
| 98 | 1.2.2.4 | **Modificación de ciudadano, operador y administrador** | 3d | 2011-08-05 | 2011-08-07 | 92 | 50d | 0d | Adriel | 24h |
| 99 | 1.2.2.4.1 | Análisis | 0.5d | 2011-08-05 | 2011-08-05 |  | 50d | 0d |  |  |
| 100 | 1.2.2.4.2 | Diseño | 0.5d | 2011-08-05 | 2011-08-06 | 99 | 50d | 0d |  |  |
| 101 | 1.2.2.4.3 | Desarrollo | 1.5d | 2011-08-06 | 2011-08-07 | 100 | 50d | 0d |  |  |
| 102 | 1.2.2.4.4 | Testing | 0.25d | 2011-08-07 | 2011-08-07 | 101 | 50d | 0d |  |  |
| 103 | 1.2.2.4.5 | Documentación | 0.25d | 2011-08-07 | 2011-08-07 | 102 | 50d |  |  |  |

| ID | WBS | Task | Duration | Start | Finish | Predecessors | Total slack | Free slack | Resources | Work |
| --- | --- | --- | --- | --- | --- | --- | --- | --- | --- | --- |
| 104 | 1.2.2.5 | **Baja de ciudadano, operador y administrador** | 5d | 2011-08-07 | 2011-08-14 | 98 | 50d | 0d | Adriel | 40h |
| 105 | 1.2.2.5.1 | Análisis | 0.5d | 2011-08-07 | 2011-08-08 |  | 50d | 0d |  |  |
| 106 | 1.2.2.5.2 | Diseño | 0.5d | 2011-08-08 | 2011-08-09 | 105 | 50d | 0d |  |  |
| 107 | 1.2.2.5.3 | Desarrollo | 3d | 2011-08-09 | 2011-08-13 | 106 | 50d | 0d |  |  |
| 108 | 1.2.2.5.4 | Testing | 0.5d | 2011-08-13 | 2011-08-14 | 107 | 50d | 0d |  |  |
| 109 | 1.2.2.5.5 | Documentación | 0.5d | 2011-08-14 | 2011-08-14 | 108 | 50d |  |  |  |
| 110 | 1.2.2.6 | **Bloqueo de ciudadano** | 1d | 2011-08-14 | 2011-08-16 | 104 | 50d | 0d | Adriel | 8h |
| 111 | 1.2.2.6.1 | Análisis | 0.25d | 2011-08-14 | 2011-08-14 |  | 50.75d |  |  |  |
| 112 | 1.2.2.6.2 | Diseño | 0.25d | 2011-08-14 | 2011-08-14 |  | 50.75d |  |  |  |
| 113 | 1.2.2.6.3 | Desarrollo | 1d | 2011-08-14 | 2011-08-16 |  | 50d |  |  |  |
| 114 | 1.2.2.6.4 | Testing | 0.25d | 2011-08-14 | 2011-08-14 |  | 50.75d |  |  |  |
| 115 | 1.2.2.6.5 | Documentación | 0.25d | 2011-08-14 | 2011-08-14 |  | 50.75d |  |  |  |
| 116 | 1.2.2.7 | **Búsqueda de usuarios** | 5d | 2011-08-16 | 2011-08-22 | 110 | 50d |  | Adriel | 40h |
| 117 | 1.2.2.7.1 | Análisis | 0.5d | 2011-08-16 | 2011-08-16 | 110 | 50d | 0d |  |  |
| 118 | 1.2.2.7.2 | Diseño | 0.5d | 2011-08-17 | 2011-08-17 | 117 | 50d | 0d |  |  |
| 119 | 1.2.2.7.3 | Desarrollo | 3d | 2011-08-17 | 2011-08-21 | 118 | 50d | 0d |  |  |
| 120 | 1.2.2.7.4 | Testing | 0.5d | 2011-08-21 | 2011-08-21 | 119 | 50d | 0d |  |  |
| 121 | 1.2.2.7.5 | Documentación | 0.5d | 2011-08-21 | 2011-08-22 | 120 | 50d |  |  |  |
| 123 | 1.2.3 | **Etapa 3: Aplicación Android para celular (entregable 9)** | 55d | 2011-07-13 | 2011-09-24 | 2 | 0d |  | Pavel; Marianela; Hernán | 2640h |
| 124 | 1.2.3.1 | **Login usuario en Android** | 17d | 2011-07-13 | 2011-08-04 | 2 | 0d |  | Pavel; Marianela; Hernán | 408h |
| 125 | 1.2.3.1.1 | Análisis | 3d | 2011-07-13 | 2011-07-17 |  | 0d |  |  |  |
| 126 | 1.2.3.1.2 | Diseño | 2d | 2011-07-17 | 2011-07-19 | 125 | 0d |  |  |  |
| 127 | 1.2.3.1.3 | Desarrollo | 10d | 2011-07-19 | 2011-08-01 | 126 | 0d |  |  |  |
| 128 | 1.2.3.1.4 | Testing | 1d | 2011-08-01 | 2011-08-03 | 127 | 0d |  |  |  |
| 129 | 1.2.3.1.5 | Documentación | 1d | 2011-08-03 | 2011-08-04 | 128 | 0d |  |  |  |

| ID | WBS | Task | Duration | Start | Finish | Predecessors | Total slack | Resources | Work |
| --- | --- | --- | --- | --- | --- | --- | --- | --- | --- |
| 130 | 1.2.3.2 | **Inicio de Reclamo en Android** | 14d | 2011-08-05 | 2011-08-22 | 124 | 0d | Marianela; Pavel; Hernán | 336h |
| 131 | 1.2.3.2.1 | Análisis | 2d | 2011-08-05 | 2011-08-07 |  | 0d |  |  |
| 132 | 1.2.3.2.2 | Diseño | 2d | 2011-08-07 | 2011-08-09 | 131 | 0d |  |  |
| 133 | 1.2.3.2.3 | Desarrollo | 7d | 2011-08-09 | 2011-08-19 | 132 | 0d |  |  |
| 134 | 1.2.3.2.4 | Testing | 2d | 2011-08-19 | 2011-08-21 | 133 | 0d |  |  |
| 135 | 1.2.3.2.5 | Documentación | 1d | 2011-08-21 | 2011-08-22 | 134 | 0d |  |  |
| 136 | 1.2.3.3 | **Alta de ciudadano en Android** | 8d | 2011-08-22 | 2011-09-03 | 130 | 0d | Marianela; Pavel; Hernán | 192h |
| 137 | 1.2.3.3.1 | Análisis | 0.5d | 2011-08-22 | 2011-08-23 |  | 0d |  |  |
| 138 | 1.2.3.3.2 | Diseño | 1d | 2011-08-23 | 2011-08-25 | 137 | 0d |  |  |
| 139 | 1.2.3.3.3 | Desarrollo | 5d | 2011-08-25 | 2011-08-31 | 138 | 0d |  |  |
| 140 | 1.2.3.3.4 | Testing | 1d | 2011-08-31 | 2011-09-02 | 139 | 0d |  |  |
| 141 | 1.2.3.3.5 | Documentación | 0.5d | 2011-09-02 | 2011-09-03 | 140 | 0d |  |  |
| 142 | 1.2.3.4 | **Seguimiento de Reclamo en Android** | 13d | 2011-09-03 | 2011-09-19 | 136 | 0d | Pavel; Marianela; Hernán | 312h |
| 143 | 1.2.3.4.1 | Análisis | 1d | 2011-09-03 | 2011-09-03 |  | 0d |  |  |
| 144 | 1.2.3.4.2 | Diseño | 1.5d | 2011-09-03 | 2011-09-05 | 143 | 0d |  |  |
| 145 | 1.2.3.4.3 | Desarrollo | 9d | 2011-09-05 | 2011-09-17 | 144 | 0d |  |  |
| 146 | 1.2.3.4.4 | Testing | 1d | 2011-09-17 | 2011-09-18 | 145 | 0d |  |  |
| 147 | 1.2.3.4.5 | Documentación | 0.5d | 2011-09-18 | 2011-09-19 | 146 | 0d |  |  |
| 148 | 1.2.3.5 | **Integración de cámara con la aplicación Android** | 3d | 2011-09-19 | 2011-09-24 | 142 | 0d | Pavel; Marianela; Hernán | 72h |
| 149 | 1.2.3.5.1 | Análisis | 0.25d | 2011-09-19 | 2011-09-19 |  | 0d |  |  |
| 150 | 1.2.3.5.2 | Diseño | 0.25d | 2011-09-19 | 2011-09-19 | 149 | 0d |  |  |
| 151 | 1.2.3.5.3 | Desarrollo | 1.5d | 2011-09-20 | 2011-09-22 | 150 | 0d |  |  |
| 152 | 1.2.3.5.4 | Testing | 0.5d | 2011-09-22 | 2011-09-23 | 151 | 0d |  |  |
| 153 | 1.2.3.5.5 | Documentación | 0.5d | 2011-09-23 | 2011-09-24 | 152 | 0d |  |  |

| ID | WBS | Task | Type | Duration | Start | Finish | Predecessors | Total slack | Free slack | Resources | Work |
| --- | --- | --- | --- | --- | --- | --- | --- | --- | --- | --- | --- |
| 155 | 1.2.4 | **Etapa 4: Presentación Comercial** |  | 2d | 2011-07-13 | 2011-07-16 |  | 79d |  | equipo | 32h |
| 156 | 1.2.4.1 | Presentación PowerPoint (entregable 10) |  | 2d | 2011-07-13 | 2011-07-16 |  | 79d |  | equipo | 16h |
| 158 | 1.2.5 | **Etapa 5: Presentación de Información (entregable 11)** |  | 21d | 2011-09-12 | 2011-10-10 | 72 | 0d |  | Adriel; Matias | 824h |
| 159 | 1.2.5.1 | **Exportacion a PDF de listado de reclamos** |  | 4d | 2011-09-12 | 2011-09-18 | 72 | 0d |  | Matias | 32h |
| 160 | 1.2.5.1.1 | Análisis |  | 0.5d | 2011-09-12 | 2011-09-13 | 72 | 0d |  |  |  |
| 161 | 1.2.5.1.2 | Diseño | milestone | 0d | 2011-09-13 | 2011-09-13 | 160 | 0d |  |  |  |
| 162 | 1.2.5.1.3 | Desarrollo |  | 3d | 2011-09-13 | 2011-09-17 | 161 | 0d |  |  |  |
| 163 | 1.2.5.1.4 | Testing |  | 0.5d | 2011-09-17 | 2011-09-18 | 162 | 0d |  |  |  |
| 164 | 1.2.5.2 | **Armado tablas con todos los reclamos** |  | 1d | 2011-09-18 | 2011-09-19 | 159 | 16d |  | Adriel | 8h |
| 165 | 1.2.5.2.1 | Análisis | milestone | 0d | 2011-09-18 | 2011-09-18 |  | 16d | 0d |  |  |
| 166 | 1.2.5.2.2 | Diseño | milestone | 0d | 2011-09-18 | 2011-09-18 | 165 | 16d | 0d |  |  |
| 167 | 1.2.5.2.3 | Desarrollo |  | 1d | 2011-09-18 | 2011-09-19 | 166 | 16d | 0d |  |  |
| 168 | 1.2.5.2.4 | Testing | milestone | 0d | 2011-09-19 | 2011-09-19 | 167 | 16d | 0d |  |  |
| 169 | 1.2.5.2.5 | Documentación | milestone | 0d | 2011-09-19 | 2011-09-19 | 168 | 16d |  |  |  |
| 170 | 1.2.5.3 | **Armado tablas con los reclamos en curso** |  | 1d | 2011-09-18 | 2011-09-19 | 159 | 0d |  | Adriel | 8h |
| 171 | 1.2.5.3.1 | Análisis | milestone | 0d | 2011-09-18 | 2011-09-18 |  | 0d |  |  |  |
| 172 | 1.2.5.3.2 | Diseño | milestone | 0d | 2011-09-18 | 2011-09-18 | 171 | 0d |  |  |  |
| 173 | 1.2.5.3.3 | Desarrollo |  | 1d | 2011-09-18 | 2011-09-19 | 172 | 0d |  |  |  |
| 174 | 1.2.5.3.4 | Testing | milestone | 0d | 2011-09-19 | 2011-09-19 | 173 | 0d |  |  |  |
| 175 | 1.2.5.3.5 | Documentación | milestone | 0d | 2011-09-19 | 2011-09-19 | 174 | 0d |  |  |  |
| 176 | 1.2.5.4 | **Armado Home de Administrativo con mapa de CABA** |  | 8d | 2011-09-19 | 2011-09-30 | 170 | 0d |  | Matias | 64h |
| 177 | 1.2.5.4.1 | Análisis |  | 0.5d | 2011-09-19 | 2011-09-19 |  | 0d |  |  |  |
| 178 | 1.2.5.4.2 | Diseño |  | 1d | 2011-09-20 | 2011-09-21 | 177 | 0d |  |  |  |
| 179 | 1.2.5.4.3 | Desarrollo |  | 5d | 2011-09-21 | 2011-09-28 | 178 | 0d |  |  |  |
| 180 | 1.2.5.4.4 | Testing |  | 1d | 2011-09-28 | 2011-09-29 | 179 | 0d |  |  |  |
| 181 | 1.2.5.4.5 | Documentación |  | 0.5d | 2011-09-30 | 2011-09-30 | 180 | 0d |  |  |  |

| ID | WBS | Task | Duration | Start | Finish | Predecessors | Total slack | Constraint | Resources | Work |
| --- | --- | --- | --- | --- | --- | --- | --- | --- | --- | --- |
| 182 | 1.2.5.5 | **Armado Home de Ciudadano con mapa CABA con sus reclamos** | 8d | 2011-09-30 | 2011-10-10 | 176 | 0d |  | Matias | 64h |
| 183 | 1.2.5.5.1 | Análisis | 0.5d | 2011-09-30 | 2011-10-01 |  | 0d |  |  |  |
| 184 | 1.2.5.5.2 | Diseño | 0.5d | 2011-10-01 | 2011-10-01 | 183 | 0d |  |  |  |
| 185 | 1.2.5.5.3 | Desarrollo | 5d | 2011-10-01 | 2011-10-08 | 184 | 0d |  |  |  |
| 186 | 1.2.5.5.4 | Testing | 1d | 2011-10-08 | 2011-10-09 | 185 | 0d |  |  |  |
| 187 | 1.2.5.5.5 | Documentación | 1d | 2011-10-09 | 2011-10-10 | 186 | 0d |  |  |  |
| 188 | 1.2.5.6 | **Download de aplicación Android** | 13d | 2011-09-24 | 2011-10-10 | 123 | 0d |  | Marianela; Pavel; Hernán | 312h |
| 189 | 1.2.5.6.1 | Análisis | 0.5d | 2011-09-24 | 2011-09-24 |  | 0d |  |  |  |
| 190 | 1.2.5.6.2 | Diseño | 0.5d | 2011-09-24 | 2011-09-24 | 189 | 0d |  |  |  |
| 191 | 1.2.5.6.3 | Desarrollo | 9d | 2011-09-25 | 2011-10-07 | 190 | 0d |  |  |  |
| 192 | 1.2.5.6.4 | Testing | 2d | 2011-10-07 | 2011-10-09 | 191 | 0d |  |  |  |
| 193 | 1.2.5.6.5 | Documentación | 1d | 2011-10-09 | 2011-10-10 | 192 | 0d |  |  |  |
| 195 | 1.2.6 | **Etapa 6: Final de desarrollo e implementación (entregable 12)** | 12d | 2011-10-10 | 2011-10-26 | 123, 158 | 0d |  | equipo | 280h |
| 196 | 1.2.6.1 | Manual de Usuario - Web | 1d | 2011-10-10 | 2011-10-11 | 182 | 0d |  | Adriel; Matias | 16h |
| 197 | 1.2.6.2 | Manual de Usuario - Android | 1d | 2011-10-10 | 2011-10-11 | 123 | 0d |  | Hernán; Pavel; Marianela | 24h |
| 198 | 1.2.6.3 | Manual de Instalación y Configuración | 1d | 2011-10-12 | 2011-10-13 | 196, 197 | 11d |  | Adriel | 8h |
| 199 | 1.2.6.4 | Instalador "Acción ciudadana" v.1.0 | 2d | 2011-10-12 | 2011-10-15 | 196 | 0d |  | Matias | 16h |
| 200 | 1.2.6.5 | Empaquetado de Aplicación Android "Acción ciudadana" v.1.0 | 2d | 2011-10-12 | 2011-10-15 | 197 | 0d |  | Hernán; Pavel; Marianela | 48h |
| 201 | 1.2.6.6 | Testing General y Final | 9d | 2011-10-15 | 2011-10-26 | 199, 200 | 0d |  | equipo | 72h |
| 203 | 1.3 | **Fase de Seguimiento, Control y Ajustes** | 149d | 2011-04-15 | 2011-10-28 |  | 0d |  | equipo | 4768h |
| 204 | 1.3.1 | Reuniones y mails | 149d | 2011-04-15 | 2011-10-28 |  | 0d | start no earlier than 2011-04-15 | equipo | 1192h |
| 205 | 1.3.2 | Informe de Avance (entregables) | 149d | 2011-04-15 | 2011-10-28 |  | 0d | start no earlier than 2011-04-15 | equipo | 1192h |
| 206 | 1.3.3 | Ajustes de la planificación | 149d | 2011-04-15 | 2011-10-28 |  | 0d | start no earlier than 2011-04-15 | equipo | 1192h |
| 208 | 1.4 | **Fase de Cierre** | 1d | 2011-10-26 | 2011-10-28 |  | 0d |  | equipo | 32h |
| 209 | 1.4.1 | **Etapa 7: Cierre del Proyecto (entregable 13)** | 1d | 2011-10-26 | 2011-10-28 | 201 | 0d |  | equipo | 24h |
| 210 | 1.4.1.1 | Documentos de Lecciones Aprendidas (entregable 13) | 1d | 2011-10-26 | 2011-10-28 | 201 | 0d |  | equipo | 8h |
| 211 | 1.4.1.2 | Documentos de Cierre (entregable 13) | 1d | 2011-10-26 | 2011-10-28 | 201 | 0d |  | equipo | 8h |
